# P70后期里程碑(2--5)项目计划书

Schedule from MS Project, 2014-12-01 to 2015-06-30, A marks actual dates.
微软中国

## Calendars

- 标准: Mon-Fri 08:00-12:00, 13:00-17:00; Sat-Sun off.

## Resources

| Resource |
| --- |
| P70内核开发小组 |
| P70开发小组 |
| P70开发组 |
| 叶文林 |
| 刘远安 |
| P70外围开发组 |
| 外围通信前置开发组 |
| 徐海 |
| 稳国栋 |
| 张林颢 |
| 田旭初 |
| 资源准备（） |
| 程序开发 |
| 唐小灿 |
| 佘佳明 |
| 刘高舜 |
| 韦树远 |
| 钥匙组件开发 |
| 测试试验室 |
| 五防事业部 |
| 测试实验室 |
| 颜园才 |
| 刘贯宏 |
| 刘冠宏 |
| 莫戈文 |
| 软件事业部 |
| 张伟 |
| 周剑 |
| 刘毅 |
| 邱志才 |
| 王飞跃 |

## Schedule

| ID | WBS | Task | Type | Duration | Start | Finish | Complete | Remaining | Total slack | Resources | Work | Actual work |
| --- | --- | --- | --- | --- | --- | --- | --- | --- | --- | --- | --- | --- |
| 1 | 1 | **PSM70里程碑二工作计划** |  | 55d | 2014-12-01 A | 2015-02-13 | 82% | 9.79d |  | P70开发组 | 6584h | 3865.89h |
| 2 | 1.1 | **内核部份** |  | 17d | 2015-01-01 A | 2015-01-23 | 74% | 4.34d |  | P70内核开发小组 | 1344h | 712h |
| 3 | 1.1.1 | 实时库本地无数据运行改造（适用第三方只更新） | manual | 4d | 2015-01-01 A | 2015-01-06 A | 100% |  |  | 唐小灿 | 32h | 32h |
| 4 | 1.1.2 | 实时库本地化改造 | manual | 4d | 2015-01-07 A | 2015-01-12 A | 100% |  |  | 唐小灿 | 32h | 32h |
| 5 | 1.1.3 | 实时库消息模式运行改造 | manual | 4d | 2015-01-13 A | 2015-01-16 A | 100% |  |  | 唐小灿 | 32h | 32h |
| 6 | 1.1.4 | 统一消息平台规划 | manual | 5d | 2015-01-19 A | 2015-01-23 A | 100% |  |  | 叶文林 | 40h | 40h |
| 7 | 1.1.5 | 综自遥控消息接口 | manual | 2d | 2015-01-01 A | 2015-01-02 A | 100% |  |  | 刘远安 | 16h | 16h |
| 8 | 1.1.6 | 地线遥控消息接口 | manual | 5d | 2015-01-05 A | 2015-01-09 A | 100% |  |  | 韦树远 | 40h | 40h |
| 9 | 1.1.7 | 大数据服务UDP传输模式改造 | manual | 10d | 2015-01-12 A | 2015-01-23 A | 100% |  |  | 刘远安 | 80h | 80h |
| 10 | 1.1.8 | UDP通信内核改造（支持GPRS等不稳定网络） | manual | 7d | 2015-01-01 | 2015-01-09 |  |  |  | 叶文林; 韦树远 | 112h |  |
| 11 | 1.1.9 | 模拟过程中操作票修改 | manual | 7d | 2015-01-01 A | 2015-01-09 A | 100% |  |  | 佘佳明; 刘高舜 | 112h | 112h |
| 12 | 1.1.10 | 逻辑错误信息详细提示 | manual | 7d | 2015-01-01 | 2015-01-09 |  |  |  | 刘高舜; 佘佳明; 叶文林; 张林颢 | 224h |  |
| 13 | 1.1.11 | 多任务并行操作 | manual | 10d | 2015-01-12 | 2015-01-23 |  |  |  | 刘高舜; 佘佳明 | 160h |  |
| 14 | 1.1.12 | 地线应用 | manual | 12d | 2015-01-01 A | 2015-01-16 A | 100% |  |  | 佘佳明; 刘高舜 | 192h | 192h |
| 15 | 1.1.13 | 关健模块内测(只完成很小一部份，其余下阶段再完成) | manual | 17d | 2015-01-01 A | 2015-01-23 A | 100% |  |  | 韦树远 | 136h | 136h |
| 16 | 1.2 | **图形编辑工具** |  | 40d | 2014-12-01 A | 2015-01-23 A | 100% |  |  | 叶文林; 张林颢 | 912h | 912h |
| 17 | 1.2.1 | 图形编辑内核优化 | manual | 7d | 2015-01-01 A | 2015-01-09 A | 100% |  |  | 叶文林; 张林颢 | 112h | 112h |
| 18 | 1.2.2 | 模具创建 | manual | 10d | 2015-01-12 A | 2015-01-23 A | 100% |  |  | 叶文林; 张林颢 | 160h | 160h |
| 19 | 1.3 | **外围部份** |  | 55d | 2014-12-01 A | 2015-02-13 | 92% | 4.31d |  | P70外围开发组 | 3768h | 2241.89h |
| 20 | 1.3.1 | **第三方通信前置** |  | 54d? | 2014-12-01 A | 2015-02-12 | 94% | 3.38d? | 0d | 外围通信前置开发组 | 1784h | 1497.89h |
| 21 | 1.3.1.1 | **modbus通信前置** |  | 20d | 2014-12-01 A | 2014-12-26 A | 100% |  |  | 徐海 | 400h | 400h |
| 22 | 1.3.1.1.1 | 通讯前置组件雏形 | manual | 5d | 2014-12-01 A | 2014-12-05 A | 100% |  |  | 徐海 | 40h | 40h |
| 23 | 1.3.1.1.2 | 规约库管理框架 | manual | 5d | 2014-12-08 A | 2014-12-12 A | 100% |  |  | 徐海 | 40h | 40h |
| 24 | 1.3.1.1.3 | 配制态UI编写 | manual | 5d | 2014-12-15 A | 2014-12-19 A | 100% |  |  | 徐海 | 40h | 40h |
| 25 | 1.3.1.1.4 | 遥信遥测采集报文处理 | manual | 3d | 2014-12-15 A | 2014-12-17 A | 100% |  |  | 徐海 | 24h | 24h |
| 26 | 1.3.1.1.5 | 与P7联调 | manual | 4d | 2014-12-23 A | 2014-12-26 A | 100% |  |  | 刘远安; 唐小灿; 徐海 | 96h | 96h |
| 27 | 1.3.1.2 | 101通信前置（暂时无资源） | manual | 4d | 2015-01-19 A | 2015-01-23 A | 100% |  |  | 徐海 | 32h | 32h |
| 28 | 1.3.1.3 | 103通信前置（暂无资源） | manual | 10d | 2015-01-26 A | 2015-02-06 A | 100% |  |  | 徐海 | 80h | 80h |

| ID | WBS | Task | Type | Duration | Start | Finish | Complete | Remaining | Actual start | Resources | Work | Actual work |
| --- | --- | --- | --- | --- | --- | --- | --- | --- | --- | --- | --- | --- |
| 29 | 1.3.1.4 | **集控主子站（暂无资源）** |  | 14d? | 2015-01-26 A | 2015-02-12 | 95% | 0.7d? |  |  | 336h | 232h |
| 30 | 1.3.1.4.1 | 四大五防企业约定主子站通信前置 | manual | 1d? | 2015-01-26 | 2015-01-26 |  |  |  |  |  |  |
| 31 | 1.3.1.4.2 | **福建主子站通信置** |  | 14d | 2015-01-26 A | 2015-02-12 | 99% | 0d |  | 周剑; 刘毅 | 336h | 232h |
| 32 | 1.3.1.4.2.1 | 程序开发及内测 | manual | 10d | 2015-02-01 A | 2015-02-12 A | 100% |  |  | 周剑 | 80h | 80h |
| 33 | 1.3.1.4.2.2 | 接口集成 | manual | 9d | 2015-02-02 A | 2015-02-12 A | 100% |  |  | 周剑 | 72h | 72h |
| 34 | 1.3.1.5 | **遥控单点服务** |  | 50d? | 2014-12-01 A | 2015-02-06 | 88% | 6.14d? |  | 唐小灿 | 384h | 234.28h |
| 35 | 1.3.1.5.1 | **开发工作** |  | 15d | 2015-01-19 | 2015-02-06 A | 100% |  | 2014-12-01 |  | 120h | 120h |
| 36 | 1.3.1.5.1.1 | 遥控闭锁系统通信规约熟悉，程序框架编写 | manual | 40d | 2015-01-19 | 2015-01-23 A | 100% |  | 2014-12-01 | 唐小灿 | 40h | 40h |
| 37 | 1.3.1.5.1.2 | 遥控闭锁系统通信规约编码 | manual | 5d | 2015-01-26 A | 2015-01-30 A | 100% |  |  | 唐小灿 | 40h | 40h |
| 38 | 1.3.1.5.1.3 | 程序调试和验证 | manual | 5d | 2015-02-02 A | 2015-02-06 A | 100% |  |  | 唐小灿 | 40h | 40h |
| 39 | 1.3.1.5.2 | **接口集成** |  | 5d? | 2014-12-01 | 2014-12-05 |  |  |  | 唐小灿; P70内核开发小组 | 144h |  |
| 40 | 1.3.1.5.2.1 | 接口联调 | manual | 1d? | 2014-12-01 | 2014-12-01 |  |  |  | P70内核开发小组; 唐小灿 | 16h |  |
| 41 | 1.3.1.5.2.2 | 接口测试 | manual | 1d? | 2014-12-01 | 2014-12-01 |  |  |  | P70内核开发小组 | 8h |  |
| 42 | 1.3.1.5.2.3 | 测试工具和接口文档编写 | manual | 5d | 2014-12-01 | 2014-12-05 |  |  |  | 唐小灿 | 40h |  |
| 43 | 1.3.1.6 | 智能地线通信前置 | manual | 15d | 2014-12-08 A | 2014-12-26 A | 100% |  |  | 刘冠宏; 韦树远 | 120h | 120h |
| 44 | 1.3.2 | **钥匙通信前置（钥匙服务）** |  | 40d | 2014-12-01 A | 2015-01-23 | 87% | 5.26d |  | 稳国栋; 田旭初 | 1544h | 744h |
| 45 | 1.3.2.1 | 资源准备（规约文档、钥匙、适配器） | manual | 5d | 2014-12-01 A | 2014-12-05 A | 100% |  |  | 田旭初 | 40h | 40h |
| 46 | 1.3.2.2 | **程序开发及测试** |  | 30d | 2014-12-08 A | 2015-01-16 A | 100% |  |  | 稳国栋 | 704h | 704h |
| 47 | 1.3.2.2.1 | **钥匙组件开发** |  | 30d | 2014-12-08 A | 2015-01-16 A | 100% |  |  | 稳国栋 | 464h | 464h |
| 48 | 1.3.2.2.1.1 | 钥匙通讯协议文档和芯片数据布局熟悉26、27、31、35钥匙传票、采码、打包功能测试和协议验证 | manual | 5d | 2014-12-08 A | 2014-12-12 A | 100% |  |  | 稳国栋 | 40h | 40h |
| 49 | 1.3.2.2.1.2 | 组件系统设计，程序框架编写，概要设计文档编写 | manual | 5d | 2014-12-15 A | 2014-12-19 A | 100% |  |  | 稳国栋 | 40h | 40h |
| 50 | 1.3.2.2.1.3 | 钥匙传票、采码协议组件编码 | manual | 5d | 2014-12-22 A | 2014-12-26 A | 100% |  |  | 稳国栋 | 40h | 40h |
| 51 | 1.3.2.2.1.4 | 钥匙打包组件编码 | manual | 3d | 2014-12-29 A | 2014-12-31 A | 100% |  |  | 稳国栋 | 24h | 24h |
| 52 | 1.3.2.2.1.5 | 程序调试和验证 | manual | 5d | 2015-01-05 A | 2015-01-09 A | 100% |  |  | 稳国栋 | 40h | 40h |
| 53 | 1.3.2.2.1.6 | 测试工具和接口文档编写 | manual | 5d | 2015-01-12 A | 2015-01-16 A | 100% |  |  | 稳国栋 | 40h | 40h |

| ID | WBS | Task | Type | Duration | Start | Finish | Resources | Work |
| --- | --- | --- | --- | --- | --- | --- | --- | --- |
| 54 | 1.3.2.3 | **接口集成** |  | 5d | 2015-01-19 | 2015-01-23 | 刘远安; 稳国栋 | 160h |
| 55 | 1.3.2.3.1 | 接口联调 | manual | 2d | 2015-01-19 | 2015-01-20 | 刘远安; 稳国栋 | 32h |
| 56 | 1.3.2.3.2 | 接口测试 | manual | 3d | 2015-01-21 | 2015-01-23 | 刘远安; 稳国栋 | 48h |
| 57 | 1.4 | 系统联调 | manual | 10d | 2015-01-26 | 2015-02-06 | P70开发组 | 80h |
| 58 | 1.5 | 系统符合性内测 | manual | 5d | 2015-02-09 | 2015-02-13 | P70开发组 | 40h |
| 59 | 2 | **PSM70里程碑三项目计划** |  | 45d | 2015-02-27 | 2015-04-30 | P70开发组 | 8624h |
| 60 | 2.1 | **内核部份** |  | 45d | 2015-02-27 | 2015-04-30 | P70内核开发小组 | 4024h |
| 61 | 2.1.1 | **地线集成** |  | 45d | 2015-02-27 | 2015-04-30 | 刘高舜; 佘佳明 | 984h |
| 62 | 2.1.1.1 | 第一次集成 | manual | 11d | 2015-02-27 | 2015-03-13 | 刘高舜; 佘佳明; 邱志才 | 264h |
| 63 | 2.1.1.2 | 第二次集成 | manual | 1d? | 2015-02-27 | 2015-02-27 |  |  |
| 64 | 2.1.2 | **钥匙集成** |  | 26d | 2015-02-27 | 2015-04-03 | 稳国栋; 刘远安 | 1472h |
| 65 | 2.1.2.1 | X5钥匙集成 | manual | 11d | 2015-02-27 | 2015-03-13 | 刘远安; 稳国栋 | 176h |
| 66 | 2.1.2.2 | 35移植版钥匙集成 | manual | 11d | 2015-03-20 | 2015-04-03 | 刘远安; 稳国栋 | 176h |
| 67 | 2.1.2.3 | 36钥匙集成 | manual | 11d | 2015-03-20 | 2015-04-03 | 刘远安; 稳国栋 | 176h |
| 68 | 2.1.2.4 | 35钥匙集成 | manual | 11d | 2015-03-20 | 2015-04-03 | 刘远安; 稳国栋 | 176h |
| 69 | 2.1.2.5 | 31钥匙集成 | manual | 11d | 2015-03-20 | 2015-04-03 | 刘远安; 稳国栋 | 176h |
| 70 | 2.1.2.6 | 26钥匙集成 | manual | 11d | 2015-03-20 | 2015-04-03 | 刘远安; 稳国栋 | 176h |
| 71 | 2.1.3 | **通信前置集成配制** |  | 12d | 2015-04-06 | 2015-04-21 | 刘远安 | 320h |
| 72 | 2.1.3.1 | 通信前置统一配制入口 | manual | 3d | 2015-04-06 | 2015-04-08 | 刘远安 | 24h |
| 73 | 2.1.3.2 | **后台通信前置配制** |  | 5d | 2015-04-08 | 2015-04-14 | 刘远安 | 120h |
| 74 | 2.1.3.2.1 | **A类通信前置配制** |  | 2d | 2015-04-08 | 2015-04-09 | 刘远安 | 32h |
| 75 | 2.1.3.2.1.1 | RTU | manual | 1d | 2015-04-08 | 2015-04-08 | 刘远安 | 8h |
| 76 | 2.1.3.2.1.2 | 104 | manual | 1d | 2015-04-09 | 2015-04-09 | 刘远安 | 8h |
| 77 | 2.1.3.2.2 | **B类通信前置配制** |  | 3d | 2015-04-10 | 2015-04-14 | 刘远安 | 48h |
| 78 | 2.1.3.2.2.1 | ModBus | manual | 1d | 2015-04-10 | 2015-04-10 | 刘远安 | 8h |
| 79 | 2.1.3.2.2.2 | 101 | manual | 1d | 2015-04-13 | 2015-04-13 | 刘远安 | 8h |
| 80 | 2.1.3.2.2.3 | 103 | manual | 1d | 2015-04-14 | 2015-04-14 | 刘远安 | 8h |

| ID | WBS | Task | Type | Duration | Start | Finish | Resources | Work |
| --- | --- | --- | --- | --- | --- | --- | --- | --- |
| 81 | 2.1.3.3 | **主子站通信前置配制** |  | 3d | 2015-04-15 | 2015-04-17 | 刘远安 | 48h |
| 82 | 2.1.3.3.1 | 福建主子站通信前置 | manual | 2d | 2015-04-15 | 2015-04-16 | 刘远安 | 16h |
| 83 | 2.1.3.3.2 | 五防主子站通信前置（四大五防厂商） | manual | 1d | 2015-04-17 | 2015-04-17 | 刘远安 | 8h |
| 84 | 2.1.3.4 | **地线通信前置配制** |  | 1d | 2015-04-20 | 2015-04-20 | 刘远安 | 16h |
| 85 | 2.1.3.4.1 | 地线通信前置配制 | manual | 1d | 2015-04-20 | 2015-04-20 | 刘远安 | 8h |
| 86 | 2.1.3.5 | **单点通信前置配制** |  | 1d | 2015-04-21 | 2015-04-21 | 刘远安 | 16h |
| 87 | 2.1.3.5.1 | 单点通信前置配制 | manual | 1d | 2015-04-21 | 2015-04-21 | 刘远安 | 8h |
| 88 | 2.1.4 | **任务管理优化** |  | 34d | 2015-03-16 | 2015-04-30 | P70内核开发小组 | 504h |
| 89 | 2.1.4.1 | RDATA情况条件判断 | manual | 10d | 2015-03-16 | 2015-03-27 | 刘毅 | 80h |
| 90 | 2.1.4.2 | 多任务并发 | manual | 7d | 2015-03-19 | 2015-03-27 | 佘佳明; 唐小灿 | 112h |
| 91 | 2.1.4.3 | 采码票及其相关 | manual | 5d | 2015-03-16 | 2015-03-20 | 刘高舜 | 40h |
| 92 | 2.1.5 | 五防危险点功能 | manual | 12d | 2015-04-15 | 2015-04-30 | 佘佳明; 邱志才 | 192h |
| 93 | 2.1.6 | 数据包备份与恢复 | manual | 11d | 2015-04-16 | 2015-04-30 | P70内核开发小组 | 88h |
| 94 | 2.1.7 | UI优化 | manual | 13d | 2015-03-30 | 2015-04-15 | P70内核开发小组 | 104h |
| 95 | 2.2 | **图形编辑工具** |  | 45d | 2015-02-27 | 2015-04-30 | 叶文林; 张林颢 | 1800h |
| 96 | 2.2.1 | **绘图包** |  | 31d | 2015-02-27 | 2015-04-10 | 张林颢 | 416h |
| 97 | 2.2.1.1 | 基本矢量绘图 | manual | 1d | 2015-02-27 | 2015-02-27 | 张林颢 | 8h |
| 98 | 2.2.1.2 | 模具生成包 | manual | 5d | 2015-03-02 | 2015-03-06 | 张林颢 | 40h |
| 99 | 2.2.1.3 | 电力一次接线图绘图包 | manual | 15d | 2015-03-09 | 2015-03-27 | 张林颢 | 120h |
| 100 | 2.2.2 | **UI包** |  | 15d | 2015-03-30 | 2015-04-17 | 韦树远 | 280h |
| 101 | 2.2.2.1 | 欢迎UI | manual | 1d | 2015-03-30 | 2015-03-30 | 韦树远 | 8h |
| 102 | 2.2.2.2 | 创建模具UI包 | manual | 4d | 2015-03-31 | 2015-04-03 | 韦树远 | 32h |
| 103 | 2.2.2.3 | **绘图UI包** |  | 5d | 2015-04-06 | 2015-04-10 | 韦树远 | 80h |
| 104 | 2.2.2.3.1 | 主UI | manual | 2d | 2015-04-06 | 2015-04-07 | 韦树远 | 16h |
| 105 | 2.2.2.3.2 | 模块库UI | manual | 1d | 2015-04-08 | 2015-04-08 | 韦树远 | 8h |
| 106 | 2.2.2.3.3 | 典型接线方式UI | manual | 1d | 2015-04-09 | 2015-04-09 | 韦树远 | 8h |
| 107 | 2.2.2.3.4 | 典型间隔UI | manual | 1d | 2015-04-10 | 2015-04-10 | 韦树远 | 8h |
| 108 | 2.2.2.4 | 模型UI包 | manual | 5d | 2015-04-13 | 2015-04-17 | 韦树远 | 40h |

| ID | WBS | Task | Type | Duration | Start | Finish | Complete | Remaining | Total slack | Constraint | Resources | Work | Actual work |
| --- | --- | --- | --- | --- | --- | --- | --- | --- | --- | --- | --- | --- | --- |
| 109 | 2.2.3 | **模型包** |  | 24d | 2015-03-30 | 2015-04-30 |  |  |  |  | 叶文林 | 384h |  |
| 110 | 2.2.3.1 | 检查绘图数据 | manual | 10d | 2015-03-30 | 2015-04-10 |  |  |  |  | 叶文林 | 80h |  |
| 111 | 2.2.3.2 | 生成模型 | manual | 14d | 2015-04-13 | 2015-04-30 |  |  |  |  | 叶文林 | 112h |  |
| 112 | 2.3 | **外围部份** |  | 34d | 2015-02-27 | 2015-04-15 |  |  |  |  | P70外围开发组 | 928h |  |
| 113 | 2.3.1 | 南瑞规约通信前置 | manual | 34d | 2015-02-27 | 2015-04-15 |  |  |  |  | 周剑 | 272h |  |
| 114 | 2.3.2 | 同方规约通信前置 | manual | 34d | 2015-02-27 | 2015-04-15 |  |  |  |  | 周剑 | 272h |  |
| 115 | 2.3.3 | 主子站通信前置（四大五防厂家） | manual | 14d | 2015-03-27 | 2015-04-15 |  |  |  |  | 刘冠宏 | 112h |  |
| 116 | 2.4 | 系统联调 | manual | 9d | 2015-04-20 | 2015-04-30 |  |  |  |  | P70开发组 | 72h |  |
| 117 | 2.5 | 系统符合性内测 | manual | 45d | 2015-02-27 | 2015-04-30 |  |  |  |  | P70开发组; 田旭初; 徐海; 王飞跃 | 1440h |  |
| 118 | 3 | **PSM70里程碑四项目计划(测试)** |  | 43d | 2015-05-01 | 2015-06-30 |  |  |  |  | P70开发组; 测试实验室 | 2288h |  |
| 119 | 3.1 | **系统测试** |  | 41d | 2015-05-01 | 2015-06-26 |  |  |  |  | 测试实验室; P70开发组 | 1312h |  |
| 120 | 3.1.1 | 首轮测试 | manual | 20d | 2015-05-01 | 2015-05-28 |  |  |  |  | 测试实验室; P70开发组 | 320h |  |
| 121 | 3.1.2 | 二轮测试 | manual | 15d | 2015-05-29 | 2015-06-18 |  |  |  |  | 测试实验室; P70开发组 | 240h |  |
| 122 | 3.1.3 | 三轮测试 | manual | 6d | 2015-06-19 | 2015-06-26 |  |  |  |  | 测试实验室; P70开发组 | 96h |  |
| 123 | 3.2 | **系统发布** |  | 12d | 2015-06-15 | 2015-06-30 |  |  |  |  | P70开发组 | 288h |  |
| 124 | 3.2.1 | 使用手册编写 | manual | 10d | 2015-06-15 | 2015-06-26 |  |  |  |  | 田旭初 | 80h |  |
| 125 | 3.2.2 | 调度说明书编写 | manual | 10d | 2015-06-15 | 2015-06-26 |  |  |  |  | 田旭初 | 80h |  |
| 126 | 3.2.3 | 系统发布 | manual | 2d | 2015-06-29 | 2015-06-30 |  |  |  |  | 叶文林; 颜园才 | 32h |  |
| 127 | 4 | **PSM70里程碑五项目计划（数据迁移工具）（163个工时）** |  | 98d? | 2015-01-15 A | 2015-06-01 | 10% | 87.81d? | 21d |  | 五防事业部; 测试实验室 | 3776h | 370.87h |
| 128 | 4.1 | PSM70里程碑五项目计划（数据迁移工具）（163个工时） | milestone | 0d? | 2015-02-27 | 2015-02-27 |  |  | 0d | must start on 2015-02-27 |  |  |  |
| 129 | 4.2 | PSM70里程碑五项目计划（数据迁移工具）（163个工时） | milestone | 0d? | 2015-06-01 | 2015-06-01 |  |  | 0d | must finish on 2015-06-01 |  |  |  |
| 130 | 4.3 | **开发阶段（116个工时）** |  | 77d? | 2015-01-15 A | 2015-05-01 | 14% | 66.53d? | 42d |  | 五防事业部 | 1624h | 207.75h |
| 131 | 4.3.1 | 开发阶段（116个工时） | milestone | 0d? | 2015-02-27 | 2015-02-27 |  |  | 0d | must start on 2015-02-27 |  |  |  |
| 132 | 4.3.2 | 开发阶段（116个工时） | milestone | 0d? | 2015-04-30 | 2015-04-30 |  |  | 0d | must finish on 2015-04-30 |  |  |  |

| ID | WBS | Task | Type | Duration | Start | Finish | Complete | Remaining | Total slack | Constraint | Resources | Work | Actual work |
| --- | --- | --- | --- | --- | --- | --- | --- | --- | --- | --- | --- | --- | --- |
| 133 | 4.3.3 | **基础数据迁移设计规划（5个工时）** |  | 5d | 2015-01-15 | 2015-01-21 |  |  | 114d |  |  | 56h |  |
| 134 | 4.3.3.1 | 熟悉PSM70数据库字典 |  | 2d | 2015-01-15 | 2015-01-16 |  |  | 117d | start no earlier than 2015-01-15 | 莫戈文 | 16h |  |
| 135 | 4.3.3.2 | 数据迁移导入实现设计 |  | 2d | 2015-01-19 | 2015-01-20 |  |  | 115d | start no earlier than 2015-01-19 | 莫戈文 | 16h |  |
| 136 | 4.3.3.3 | 数据迁移导入实现设计评审 |  | 1d | 2015-01-21 | 2015-01-21 |  |  | 114d | start no earlier than 2015-01-21 | 莫戈文; 五防事业部; 软件事业部 | 24h |  |
| 137 | 4.3.4 | **基础数据迁移功能实现（64个工时）** |  | 72d? | 2015-01-22 A | 2015-05-01 | 25% | 54d? | 42d |  |  | 528h | 124h |
| 138 | 4.3.4.1 | 基础数据迁移功能实现（64个工时） | milestone | 0d? | 2015-01-22 | 2015-01-22 |  |  | 0d | must start on 2015-01-22 |  |  |  |
| 139 | 4.3.4.2 | 基础数据迁移功能实现（64个工时） | milestone | 0d? | 2015-04-30 | 2015-04-30 |  |  | 0d | must finish on 2015-04-30 |  |  |  |
| 140 | 4.3.4.3 | **04版基础数据迁移功能实现(31个工时)** |  | 42d? | 2015-01-22 A | 2015-03-20 | 50% | 21d? | 72d |  |  | 264h | 124h |
| 141 | 4.3.4.3.1 | 04版基础数据迁移功能实现(31个工时) | milestone | 0d? | 2015-01-22 | 2015-01-22 |  |  | 0d | must start on 2015-01-22 |  |  |  |
| 142 | 4.3.4.3.2 | 04版基础数据迁移功能实现(31个工时) | milestone | 0d? | 2015-03-20 | 2015-03-20 |  |  | 0d | must finish on 2015-03-20 |  |  |  |
| 143 | 4.3.4.3.3 | 用户数据导入(只导入用户名和密码，其它数据不做导入) |  | 1d | 2015-01-22 A | 2015-01-22 A | 100% |  |  | start no earlier than 2015-01-22 | 莫戈文 | 8h | 8h |
| 144 | 4.3.4.3.4 | 设备台账导入。包括：设备所属站、设备主编号、双编号、设备类型、锁类型、设备内码、RFID数据、四遥点表、所属电压等级、所属线路。 |  | 5d | 2015-01-23 A | 2015-01-29 A | 100% |  |  | start no earlier than 2015-01-23 | 莫戈文 | 40h | 40h |
| 145 | 4.3.4.3.5 | 操作术语导入 |  | 2d | 2015-01-30 A | 2015-02-02 A | 100% |  |  | start no earlier than 2015-01-30 | 莫戈文 | 16h | 16h |
| 146 | 4.3.4.3.6 | 常用术语导入 |  | 1d | 2015-02-03 A | 2015-02-03 A | 100% |  |  | start no earlier than 2015-02-03 | 莫戈文 | 8h | 8h |
| 147 | 4.3.4.3.7 | 典型票库导入 |  | 5d | 2015-02-04 A | 2015-02-10 A | 100% |  |  | start no earlier than 2015-02-04 | 莫戈文 | 40h | 40h |
| 148 | 4.3.4.3.8 | 历史票库导入 |  | 1d | 2015-02-11 A | 2015-02-11 A | 100% |  |  | start no earlier than 2015-02-11 | 莫戈文 | 8h | 8h |
| 149 | 4.3.4.3.9 | 黑匣子数据导入 |  | 5d | 2015-02-28 A | 2015-03-06 | 10% | 4.5d | 82.5d | start no earlier than 2015-02-28 | 莫戈文 | 40h | 4h |
| 150 | 4.3.4.3.10 | 打印报表参数配置数据导入 |  | 2d | 2015-03-06 | 2015-03-09 |  |  | 81d | start no earlier than 2015-03-06 | 莫戈文 | 16h |  |
| 151 | 4.3.4.3.11 | 五防防误常规逻辑、检修逻辑数据导入 |  | 2d | 2015-03-10 | 2015-03-11 |  |  | 79d | start no earlier than 2015-03-10 | 莫戈文 | 16h |  |
| 152 | 4.3.4.3.12 | 五防操作关联数据导入 |  | 1d | 2015-03-12 | 2015-03-12 |  |  | 78d | start no earlier than 2015-03-12 | 莫戈文 | 8h |  |
| 153 | 4.3.4.3.13 | 功能实现评审 |  | 1d | 2015-03-13 | 2015-03-13 |  |  | 77d | start no earlier than 2015-03-13 | 莫戈文; 五防事业部; 软件事业部 | 24h |  |
| 154 | 4.3.4.3.14 | 功能内部测试完善 |  | 5d | 2015-03-16 | 2015-03-20 |  |  | 72d | start no earlier than 2015-03-16 | 莫戈文 | 40h |  |
| 155 | 4.3.4.4 | **网络版基础数据迁移功能实现(31个工时)** |  | 30d | 2015-03-23 | 2015-05-01 |  |  | 42d |  |  | 264h |  |
| 156 | 4.3.4.4.1 | 用户数据导入(只导入用户名和密码，其它数据不做导入) |  | 1d | 2015-03-23 | 2015-03-23 |  |  | 71d | start no earlier than 2015-03-23 | 莫戈文 | 8h |  |
| 157 | 4.3.4.4.2 | 设备台账导入。包括：设备所属站、设备主编号、双编号、设备类型、锁类型、设备内码、RFID数据、四遥点表、所属电压等级、所属线路。 |  | 5d | 2015-03-24 | 2015-03-30 |  |  | 66d | start no earlier than 2015-03-24 | 莫戈文 | 40h |  |
| 158 | 4.3.4.4.3 | 操作术语导入 |  | 2d | 2015-03-31 | 2015-04-01 |  |  | 64d | start no earlier than 2015-03-31 | 莫戈文 | 16h |  |
| 159 | 4.3.4.4.4 | 常用术语导入 |  | 1d | 2015-04-02 | 2015-04-02 |  |  | 63d | start no earlier than 2015-04-02 | 莫戈文 | 8h |  |
| 160 | 4.3.4.4.5 | 典型票库导入 |  | 5d | 2015-04-03 | 2015-04-09 |  |  | 58d | start no earlier than 2015-04-03 | 莫戈文 | 40h |  |
| 161 | 4.3.4.4.6 | 历史票库导入 |  | 1d | 2015-04-10 | 2015-04-10 |  |  | 57d | start no earlier than 2015-04-10 | 莫戈文 | 8h |  |
| 162 | 4.3.4.4.7 | 黑匣子数据导入 |  | 5d | 2015-04-13 | 2015-04-17 |  |  | 52d | start no earlier than 2015-04-13 | 莫戈文 | 40h |  |
| 163 | 4.3.4.4.8 | 打印报表参数配置数据导入 |  | 2d | 2015-04-20 | 2015-04-21 |  |  | 50d | start no earlier than 2015-04-20 | 莫戈文 | 16h |  |
| 164 | 4.3.4.4.9 | 五防防误常规逻辑、检修逻辑数据导入 |  | 2d | 2015-04-22 | 2015-04-23 |  |  | 48d | start no earlier than 2015-04-22 | 莫戈文 | 16h |  |
| 165 | 4.3.4.4.10 | 五防操作关联数据导入 |  | 1d | 2015-04-24 | 2015-04-24 |  |  | 47d | start no earlier than 2015-04-24 | 莫戈文 | 8h |  |
| 166 | 4.3.4.4.11 | 功能实现评审 |  | 1d | 2015-04-27 | 2015-04-27 |  |  | 46d | start no earlier than 2015-04-27 | 莫戈文; 五防事业部; 软件事业部 | 24h |  |
| 167 | 4.3.4.4.12 | 功能内部测试完善 |  | 5d | 2015-04-27 | 2015-05-01 |  |  | 42d | start no earlier than 2015-04-27 | 莫戈文 | 40h |  |

| ID | WBS | Task | Type | Duration | Start | Finish | Total slack | Constraint | Resources | Work |
| --- | --- | --- | --- | --- | --- | --- | --- | --- | --- | --- |
| 168 | 4.3.5 | **图形数据迁移设计规划（5个工时）** |  | 5d | 2015-01-15 | 2015-01-21 | 114d |  |  | 56h |
| 169 | 4.3.5.1 | 熟悉PSM70图形数据文件格式 |  | 2d | 2015-01-15 | 2015-01-16 | 117d | start no earlier than 2015-01-15 | 张伟 | 16h |
| 170 | 4.3.5.2 | 图形迁移功能实现设计 |  | 2d | 2015-01-19 | 2015-01-20 | 115d | start no earlier than 2015-01-19 | 张伟 | 16h |
| 171 | 4.3.5.3 | 图形迁移功能实现设计评审 |  | 1d | 2015-01-21 | 2015-01-21 | 114d | start no earlier than 2015-01-21 | 张伟; 五防事业部; 软件事业部 | 24h |
| 172 | 4.3.6 | **图形数据迁移功能实现（42个工时）** |  | 52d? | 2015-01-22 | 2015-04-03 | 31d |  |  | 368h |
| 173 | 4.3.6.1 | **04版图形数据迁移导入功能实现(21个工时)** |  | 32d | 2015-01-22 | 2015-03-06 | 82d |  |  | 184h |
| 174 | 4.3.6.1.1 | 04版图形数据迁移导入功能实现 |  | 15d | 2015-01-22 | 2015-02-11 | 99d | start no earlier than 2015-01-22 | 张伟 | 120h |
| 175 | 4.3.6.1.2 | 04版图形数据迁移导入功能实现评审 |  | 1d | 2015-02-12 | 2015-02-12 | 98d | start no earlier than 2015-02-12 | 张伟; 五防事业部; 软件事业部 | 24h |
| 176 | 4.3.6.1.3 | 04版图形数据迁移导入功能内部测试完善 |  | 5d | 2015-03-02 | 2015-03-06 | 82d | start no earlier than 2015-02-28 | 张伟 | 40h |
| 177 | 4.3.6.2 | **网络版图形数据迁移导入功能实现(21个工时)** |  | 21d? | 2015-03-06 | 2015-04-03 | 0d |  |  | 184h |
| 178 | 4.3.6.2.1 | 网络版图形数据迁移导入功能实现(21个工时) | milestone | 0d? | 2015-03-06 | 2015-03-06 | 0d | must start on 2015-03-06 |  |  |
| 179 | 4.3.6.2.2 | 网络版图形数据迁移导入功能实现(21个工时) | milestone | 0d? | 2015-04-03 | 2015-04-03 | 0d | must finish on 2015-04-03 |  |  |
| 180 | 4.3.6.2.3 | 网络版图形数据迁移导入功能实现 |  | 15d | 2015-03-06 | 2015-03-26 | 68d | start no earlier than 2015-03-06 | 张伟 | 120h |
| 181 | 4.3.6.2.4 | 网络版图形数据迁移导入功能实现评审 |  | 1d | 2015-03-27 | 2015-03-27 | 67d | start no earlier than 2015-03-27 | 张伟; 五防事业部; 软件事业部 | 24h |
| 182 | 4.3.6.2.5 | 网络版图形数据迁移导入功能内部测试完善 |  | 5d | 2015-03-30 | 2015-04-03 | 62d | start no earlier than 2015-03-30 | 张伟 | 40h |
| 183 | 4.4 | **功能测试(45个工时)** |  | 21d | 2015-05-04 | 2015-06-01 | 21d |  | 测试实验室 | 584h |
| 184 | 4.4.1 | 测试内容和测试范围评审 |  | 1d | 2015-05-04 | 2015-05-04 | 41d | start no earlier than 2015-05-04 | 五防事业部; 测试实验室; 软件事业部 | 24h |
| 185 | 4.4.2 | 功能测试 |  | 20d | 2015-05-05 | 2015-06-01 | 21d | start no earlier than 2015-05-05 | 测试实验室 | 160h |
| 186 | 4.4.3 | 功能完善 |  | 13d | 2015-05-05 | 2015-05-21 | 28d | start no earlier than 2015-05-05 | 张伟; 莫戈文 | 208h |
| 187 | 4.4.4 | 测试结果评审 |  | 1d | 2015-06-01 | 2015-06-01 | 21d | start no earlier than 2015-06-01 | 五防事业部; 测试实验室; 软件事业部 | 24h |
